# POC项目

Schedule from a web Gantt chart, 2024-09-25 to 2025-02-14.
Saturdays and Sundays are off

## Schedule

| ID | WBS | Task | Type | Duration | Start | Finish | Predecessors | Complete | inPeople | Status |
| --- | --- | --- | --- | --- | --- | --- | --- | --- | --- | --- |
| 2 | 1 | 依赖项确认 |  | 20d | 2024-09-25 | 2024-10-22 |  | 100% | 虹软 | done |
| 3 | 2 | 功能列表确认 | fixed end | 8d | 2024-09-25 | 2024-10-04 |  | 100% | 本田 | done |
| 4 | 3 | 开发文档交付 |  | 19d | 2024-10-07 | 2024-10-31 | 3 | 30% | 虹软 |  |
| 5 | 4 | 功能列表-UE确认 | fixed end | 6d | 2024-10-07 | 2024-10-14 | 3 | 100% | 本田 | done |
| 6 | 5 | 功能列表-内部UI作成 |  | 14d | 2024-10-15 | 2024-11-01 | 5 |  | 虹软 | waiting |
| 7 | 6 | 功能列表-客户UI作成 |  | 9d | 2024-10-15 | 2024-10-25 | 5 | 20% | 本田 |  |
| 8 | 7 | 应用开发-手机APP开发 |  | 10d | 2024-10-28 | 2024-11-08 | 7 |  | 虹软 | waiting |
| 9 | 8 | 应用开发-车机APP开发 |  | 15d | 2024-10-28 | 2024-11-15 | 7 |  | 虹软 | waiting |
| 10 | 9 | 应用开发-实现离车泊入、遥控泊出功能 |  | 10d | 2024-11-11 | 2024-11-22 |  |  |  |  |
| 11 | 10 | 应用开发-实现直进直出功能 |  | 5d | 2024-11-22 | 2024-11-28 |  |  |  |  |
| 12 | 11 | 功能列表-验收CASE-V1 |  | 1d | 2024-10-15 | 2024-10-15 | 5 | 100% | 虹软 | done |
| 13 | 12 | 功能列表-测试CASE-V1 |  | 14d | 2024-10-15 | 2024-11-01 | 5 |  | 虹软 |  |
| 14 | 13 | 摸底测试-IVISTA |  | 5d | 2024-11-04 | 2024-11-08 | 13 |  | 虹软 | waiting |
| 15 | 14 | 功能列表-异常诊断-V1 |  | 1d | 2024-10-15 | 2024-10-15 | 5 | 100% | 虹软 | done |
| 16 | 15 | 开发环境-开发板提供 |  | 23d | 2024-09-25 | 2024-10-25 |  | 50% | 阿尔派 |  |
| 17 | 16 | 整车环境-OMS相机采购 |  | 10d | 2024-10-14 | 2024-10-25 |  | 20% | 虹软 |  |
| 18 | 17 | 整车环境-AVM相机采购 |  | 11d | 2024-10-11 | 2024-10-25 |  | 20% | 虹软 |  |
| 19 | 18 | 8255平台移植 |  | 15d | 2024-10-28 | 2024-11-15 | 16, 18, 17 |  | 虹软 | waiting |
| 20 | 19 | 整车环境-AVM样品相机，取流调试 |  | 5d | 2024-10-17 | 2024-10-23 |  | 30% | 阿尔派 |  |
| 21 | 20 | 整车环境-USS样品 |  | 3d | 2024-10-23 | 2024-10-25 |  |  | 虹宜 |  |
| 22 | 21 | 感知算法调优 |  | 20d | 2024-11-18 | 2024-12-13 | 19 |  | 虹软 | waiting |
| 23 | 22 | 台架联合调试 |  | 20d | 2024-11-18 | 2024-12-13 | 19 |  | Alpine&ArcSoft | waiting |
| 24 | 23 | 实车联合调试 |  | 13d | 2024-12-16 | 2025-01-01 | 23 |  | Alpine&ArcSoft | waiting |
| 25 | 24 | β版本交付 |  | 12d | 2025-01-02 | 2025-01-17 | 24 |  | ArcSoft | waiting |
| 26 | 25 | 整车环境-车辆提供 |  | 38d | 2024-09-25 | 2024-11-15 |  | 50% | 虹宜 |  |
| 27 | 26 | MCU开发环境-MCU接口资料准备 |  | 10d | 2024-10-14 | 2024-10-25 |  | 50% | 阿尔派 |  |
| 28 | 27 | MCU控制协议-破解和调试 |  | 10d | 2024-11-18 | 2024-11-29 | 29, 27, 26 |  | 虹软&虹宜 | waiting |
| 29 | 28 | MCU开发环境-编译器及工具准备 |  | 10d | 2024-10-14 | 2024-10-25 |  | 30% | 虹宜 |  |
| 30 | 29 | 实车效果调优 |  | 10d | 2025-01-20 | 2025-01-31 | 25 |  | 虹软 | waiting |
| 31 | 30 | Final版本交付 |  | 5d | 2025-02-03 | 2025-02-07 | 30 |  | 虹软 | waiting |
| 32 | 31 | 版本验收 |  | 5d | 2025-02-10 | 2025-02-14 | 31 |  | 本田 | waiting |

Notes:
- 3: 项目方确认的SOR/项目计划表
- 4: 方案设计说明、API文档、项目开发计划，接口沟通
- 12: 参考i-VISTA的评测
- 15: 不允许出现没有提示的系统异常
- 16: 样件板
- 17: 走流程中
- 18: 走流程中
- 19: 示例程序、α版SDK、测试报告（α版本用于集成调试）
- 20: 内部已完成调试，需要在阿尔派的开发板中走通 / 模组+线束 1017寄出
- 22: 精度测试报告
- 23: 上车前的联调
- 24: 具备目标功能的实车
- 25: 功能说明文档、示例程序、β版SDK、测试报告
- 26: 1辆目标实车（运至杭州，需要有临牌和商业保险）
- 27: CAN信号接口、RPC调用、TASK注册相关开发资料提供
- 30: 目标功能优化的实车
- 31: 功能说明文档、示例程序、Final版SDK、测试报告
- 32: 验收报告
